# Projektplan_05

Schedule from MS Project, 2014-06-02 to 2014-09-01, status date 2014-07-08, A marks actual dates.

## Calendars

- Standard: Mon-Fri 08:00-12:00, 13:00-17:00; Sat-Sun off. Exceptions (off unless hours are given): 2014-05-20 to 2014-08-30 (Frei, recurring).

## Resources

| Resource |
| --- |
| David |
| Felix |
| Tobias |
| Lukas |

## Schedule

| ID | WBS | Task | Type | Duration | Start | Finish | Predecessors | Complete | Remaining | Baseline start | Baseline finish | Baseline duration | Baseline 1 start | Baseline 1 finish | Total slack | Free slack | Constraint | Resources | Work | Actual work | Deliverables |
| --- | --- | --- | --- | --- | --- | --- | --- | --- | --- | --- | --- | --- | --- | --- | --- | --- | --- | --- | --- | --- | --- |
| 1 | 1 | **Wettbewerbsanalyse** |  | 3.83d | 2014-06-02 A | 2014-06-12 A |  | 100% |  | 2014-06-02 | 2014-06-12 | 3.83d | 2014-06-02 | 2014-06-12 |  |  |  |  | 20.8h | 20.8h |  |
| 2 | 1.1 | Alternativen recherchieren |  | 2d | 2014-06-02 A | 2014-06-05 A |  | 100% |  | 2014-06-02 | 2014-06-05 | 2d | 2014-06-02 | 2014-06-05 |  |  |  | Tobias [50%] | 8h | 8h | Wettbewerbsanalyse: Feature Matrix |
| 3 | 1.2 | Mediatheken explorieren |  | 2d | 2014-06-05 A | 2014-06-12 A | 2 | 100% |  | 2014-06-05 | 2014-06-12 | 2d | 2014-06-05 | 2014-06-12 |  |  |  | Tobias [50%] | 8h | 8h | Wettbewerbsanalyse: Feature Matrix |
| 4 | 1.3 | Einschätzung der Mediatheken |  | 1d | 2014-06-02 A | 2014-06-03 A |  | 100% |  | 2014-06-02 | 2014-06-03 | 1d | 2014-06-02 | 2014-06-03 |  |  |  | David [50%] | 4h | 4h | Feature Matrix Mediatheken |
| 5 | 1.4 | Featurematrix erstellen |  | 0.2d | 2014-06-12 A | 2014-06-12 A | 3, 4 | 100% |  | 2014-06-12 | 2014-06-12 | 0.2d | 2014-06-12 | 2014-06-12 |  |  |  | Tobias [50%] | 0.8h | 0.8h |  |
| 6 | 1.5 | Featurematrix abgeschlossen | milestone | 0d | 2014-06-12 A | 2014-06-12 A | 5 | 100% |  | 2014-06-12 | 2014-06-12 | 0d | 2014-06-12 | 2014-06-12 |  |  |  | Tobias |  |  |  |
| 7 | 2 | **Mediatheken einbinden** |  | 19.68d | 2014-06-12 A | 2014-08-21 | 1 | 47% | 10.51d |  |  |  | 2014-06-12 | 2014-09-05 | 0d |  |  |  | 195.4h | 90.25h |  |
| 8 | 2.1 | API's recherchieren |  | 2d | 2014-06-12 A | 2014-06-19 |  | 75% | 0.5d |  |  |  | 2014-06-12 | 2014-06-19 | 0d |  |  | David [50%]; Lukas [50%] | 16h | 12h | How-To Mediatheken-Einbinden |
| 9 | 2.2 | **"ZDF" Mediathek** |  | 18d | 2014-06-19 A | 2014-08-21 | 8 | 47% | 9.51d |  |  |  | 2014-06-19 | 2014-09-05 | 0d |  |  |  | 86.4h | 41.4h |  |
| 10 | 2.2.1 | **Suchen in "ZDF"** |  | 6.95d | 2014-06-19 A | 2014-07-15 |  | 71% | 2d |  |  |  | 2014-06-19 | 2014-07-15 | 0d |  |  |  | 32h | 22.8h |  |
| 11 | 2.2.1.1 | Exploration der Suchfunktionen von "ZDF" |  | 1d | 2014-06-19 A | 2014-06-23 A |  | 100% |  |  |  |  | 2014-06-19 | 2014-06-23 |  |  |  | David [50%] | 4h | 4h |  |
| 12 | 2.2.1.2 | Entwicklung Queries |  | 3d | 2014-06-23 A | 2014-07-01 A | 11 | 100% |  |  |  |  | 2014-06-23 | 2014-07-01 |  |  |  | David [50%] | 12h | 12h |  |
| 13 | 2.2.1.3 | Parsen der Ergebnisse |  | 2d | 2014-07-01 A | 2014-07-08 | 12 | 75% | 0.5d |  |  |  | 2014-07-01 | 2014-07-08 | 0.2d | 0d |  | David [50%] | 8h | 6h |  |
| 14 | 2.2.1.4 | Darstellung der Ergebnisse |  | 2d | 2014-07-08 A | 2014-07-15 | 13 | 10% | 1.8d |  |  |  | 2014-07-08 | 2014-07-15 | 0d |  |  | Lukas [50%] | 8h | 0.8h |  |
| 15 | 2.2.1.5 | Suchen in Mediatheken abgeschlossen | milestone | 0d | 2014-07-15 A | 2014-07-15 | 14 | 60% | 0d |  |  |  | 2014-07-15 | 2014-07-15 | 0d |  |  | David |  |  |  |
| 16 | 2.2.2 | **Browsing in "ZDF"** |  | 18d | 2014-06-19 A | 2014-08-21 | 8 | 15% | 15.28d |  |  |  | 2014-06-19 | 2014-09-05 | 0d |  |  |  | 22.4h | 4.4h |  |
| 17 | 2.2.2.1 | Exploration der IA der Mediathek |  | 0.3d | 2014-06-19 A | 2014-06-19 A |  | 100% |  |  |  |  | 2014-06-19 | 2014-06-30 |  |  |  | Lukas | 2.4h | 2.4h |  |
| 18 | 2.2.2.2 | Entwicklung Queries |  | 3d | 2014-08-05 A | 2014-08-14 | 17 | 10% | 2.7d |  |  |  | 2014-08-28 | 2014-09-03 | 0d |  | as late as possible | Lukas [50%] | 12h | 1.2h |  |
| 19 | 2.2.2.3 | Parsen der Ergebnisse |  | 2d | 2014-08-14 A | 2014-08-21 | 18 | 10% | 1.8d |  |  |  | 2014-09-03 | 2014-09-05 | 0d |  |  | David [50%] | 8h | 0.8h |  |
| 20 | 2.2.2.4 | Browsing in Mediatheken abgeschlossen | milestone | 0d | 2014-08-21 A | 2014-08-21 | 19 | 10% | 0d |  |  |  | 2014-09-05 | 2014-09-05 | 0d |  |  | Tobias |  |  |  |
| 21 | 2.2.3 | **Streamen von "ZDF"** |  | 6.25d | 2014-07-15 A | 2014-08-05 | 15 | 46% | 3.35d |  |  |  | 2014-07-15 | 2014-08-05 | 0.3d | 0d |  |  | 28h | 13h |  |
| 22 | 2.2.3.1 | Streaming |  | 6d | 2014-07-15 A | 2014-07-31 |  | 50% | 3d |  |  |  | 2014-07-15 | 2014-07-31 | 0d |  |  | David [50%] | 24h | 12h |  |
| 23 | 2.2.3.2 | Dateitypen / Player & Grundlagen |  | 1d | 2014-07-31 A | 2014-08-05 | 22 | 25% | 0.75d |  |  |  | 2014-07-31 | 2014-08-05 | 0.3d |  |  | David [50%] | 4h | 1h |  |
| 24 | 2.2.4 | Streaming in Seite einbinden |  | 1d | 2014-08-05 A | 2014-08-07 | 21 | 30% | 0.7d |  |  |  | 2014-08-05 | 2014-08-07 | 3.67d | 0d |  | Lukas [50%] | 4h | 1.2h |  |
| 25 | 2.2.5 | "ZDF" Mediathek eingebunden | milestone | 0d | 2014-08-07 A | 2014-08-07 | 24 | 30% | 0d |  |  |  | 2014-08-07 | 2014-08-07 | 3.67d |  |  | Lukas |  |  |  |

| ID | WBS | Task | Type | Duration | Start | Finish | Predecessors | Complete | Remaining | Baseline start | Baseline finish | Baseline duration | Baseline 1 start | Baseline 1 finish | Total slack | Free slack | Constraint | Resources | Work | Actual work |
| --- | --- | --- | --- | --- | --- | --- | --- | --- | --- | --- | --- | --- | --- | --- | --- | --- | --- | --- | --- | --- |
| 26 | 2.3 | **"ARD" Mediathek** |  | 16.32d | 2014-06-19 A | 2014-08-14 | 8 | 40% | 9.78d |  |  |  | 2014-06-19 | 2014-09-03 | 1.12d | 0d |  |  | 85h | 30.85h |
| 27 | 2.3.1 | **Suchen in "ARD"** |  | 7.15d | 2014-06-19 A | 2014-07-15 |  | 57% | 3.05d |  |  |  | 2014-06-19 | 2014-07-15 | 1.8d |  |  |  | 23.8h | 13.65h |
| 28 | 2.3.1.1 | Exploration der Suchfunktionen von "ARD" |  | 1d | 2014-06-19 A | 2014-06-26 A |  | 100% |  |  |  |  | 2014-06-19 | 2014-06-23 |  |  |  | Lukas [50%] | 4h | 4h |
| 29 | 2.3.1.2 | Entwicklung Queries |  | 0.95d | 2014-06-23 A | 2014-07-03 | 28 | 75% | 0.24d |  |  |  | 2014-06-23 | 2014-07-01 | 1.12d | 0d |  | Lukas [50%] | 3.8h | 2.85h |
| 30 | 2.3.1.3 | Parsen der Ergebnisse |  | 2d | 2014-07-03 A | 2014-07-08 | 29 | 75% | 0.5d |  |  |  | 2014-07-01 | 2014-07-08 | 0.1d | 0d |  | Lukas [50%] | 8h | 6h |
| 31 | 2.3.1.4 | Darstellung der Ergebnisse |  | 2d | 2014-07-08 A | 2014-07-15 | 30 | 10% | 1.8d |  |  |  | 2014-07-08 | 2014-07-15 | 1.8d | 0d |  | Lukas [50%] | 8h | 0.8h |
| 32 | 2.3.1.5 | Suchen in Mediatheken abgeschlossen | milestone | 0d | 2014-07-15 A | 2014-07-15 | 31 | 10% | 0d |  |  |  | 2014-07-15 | 2014-07-15 | 1.8d |  |  | David |  |  |
| 33 | 2.3.2 | **Browsing in "Das Erste"** |  | 9.5d | 2014-06-19 A | 2014-07-22 |  | 6% | 8.96d |  |  |  | 2014-06-19 | 2014-09-03 | 7.95d |  |  |  | 29.2h | 1.2h |
| 34 | 2.3.2.1 | Exploration der IA's der Mediathek |  | 0.3d | 2014-06-19 A | 2014-06-19 A |  | 100% |  |  |  |  | 2014-06-19 | 2014-06-23 |  |  |  | Lukas [50%] | 1.2h | 1.2h |
| 35 | 2.3.2.2 | Entwicklung Queries |  | 3d | 2014-07-08 | 2014-07-17 | 34 |  |  |  |  |  | 2014-08-21 | 2014-09-01 | 6.5d | 0d | start no earlier than 2014-07-08 | Lukas [50%] | 12h |  |
| 36 | 2.3.2.3 | Parsen der Ergebnisse |  | 2d | 2014-07-17 | 2014-07-22 | 35 |  |  |  |  |  | 2014-09-01 | 2014-09-03 | 7.83d | 0d |  | Lukas | 16h |  |
| 37 | 2.3.2.4 | Browsing in Mediathek abgeschlossen | milestone | 0d | 2014-07-22 | 2014-07-22 | 36 |  |  |  |  |  | 2014-09-03 | 2014-09-03 | 7.95d |  |  | Lukas |  |  |
| 38 | 2.3.3 | **Streamen von "Das Erste"** |  | 6.25d | 2014-07-22 A | 2014-08-12 | 32 | 50% | 3.12d |  |  |  | 2014-07-15 | 2014-08-05 | 0.62d | 0d |  |  | 28h | 14h |
| 39 | 2.3.3.1 | Streaming |  | 6d | 2014-07-22 A | 2014-08-07 |  | 50% | 3d |  |  |  | 2014-07-15 | 2014-07-31 | 0d |  | start no earlier than 2014-07-22 | Lukas [50%] | 24h | 12h |
| 40 | 2.3.3.2 | Dateitypen / Player & Grundlagen |  | 1d | 2014-08-07 A | 2014-08-12 | 39 | 50% | 0.5d |  |  |  | 2014-07-31 | 2014-08-05 | 0.62d |  |  | Lukas [50%] | 4h | 2h |
| 41 | 2.3.4 | Streaming in Seite einbinden |  | 1d | 2014-08-12 A | 2014-08-14 | 38 | 50% | 0.5d |  |  |  | 2014-08-05 | 2014-08-07 | 1.12d | 0d |  | Lukas [50%] | 4h | 2h |
| 42 | 2.3.5 | "Das Erste" Mediathek eingebunden | milestone | 0d | 2014-08-14 A | 2014-08-14 | 41 | 50% | 0d |  |  |  | 2014-08-07 | 2014-08-07 | 1.12d |  |  | Lukas |  |  |
| 43 | 2.4 | Kombination Suchalgorithmen |  | 2d | 2014-08-14 A | 2014-08-21 | 26 | 75% | 0.5d |  |  |  | 2014-09-03 | 2014-09-05 | 0d |  |  | Lukas [50%] | 8h | 6h |
| 44 | 3 | **Grundgerüst der Seite** |  | 3.5d | 2014-06-02 A | 2014-06-12 A |  | 100% |  | 2014-06-02 | 2014-06-12 | 3.5d | 2014-06-02 | 2014-06-12 |  |  |  |  | 18h | 18h |
| 45 | 3.1 | Datenbankschema |  | 0.5d | 2014-06-02 A | 2014-06-02 A |  | 100% |  | 2014-06-02 | 2014-06-02 | 0.5d | 2014-06-02 | 2014-06-02 |  |  |  | Lukas [50%] | 2h | 2h |
| 46 | 3.2 | PHP Framework |  | 2.5d | 2014-06-03 A | 2014-06-10 A | 45 | 100% |  | 2014-06-03 | 2014-06-09 | 2d | 2014-06-03 | 2014-06-10 |  |  |  | Lukas [50%] | 10h | 10h |
| 47 | 3.3 | User Login |  | 1.5d | 2014-06-09 A | 2014-06-12 A | 46 | 100% |  | 2014-06-09 | 2014-06-12 | 1.5d | 2014-06-09 | 2014-06-12 |  |  |  | Lukas [50%] | 6h | 6h |
| 48 | 4 | **Interface** |  | 23.5d | 2014-06-02 A | 2014-08-21 |  | 29% | 16.62d | 2014-06-02 | 2014-09-04 | 29d | 2014-06-02 | 2014-09-05 | 0d |  |  |  | 300.27h | 108h |
| 49 | 4.1 | Sketching |  | 2d | 2014-06-02 A | 2014-06-05 A |  | 100% |  | 2014-06-02 | 2014-06-05 | 2d | 2014-06-02 | 2014-06-05 |  |  |  | David [50%]; Felix [50%]; Lukas [50%]; Tobias [50%] | 32h | 32h |
| 50 | 4.2 | UI Entwürfe abgschlossen | milestone | 0d | 2014-06-05 A | 2014-06-05 A | 49 | 100% |  | 2014-06-05 | 2014-06-05 | 0d | 2014-06-05 | 2014-06-05 |  |  |  | Tobias |  |  |

| ID | WBS | Task | Type | Duration | Start | Finish | Predecessors | Complete | Remaining | Baseline 1 start | Baseline 1 finish | Total slack | Free slack | Constraint | Resources | Work | Actual work | Deliverables |
| --- | --- | --- | --- | --- | --- | --- | --- | --- | --- | --- | --- | --- | --- | --- | --- | --- | --- | --- |
| 51 | 4.3 | **Prototyping** |  | 4.62d | 2014-06-05 A | 2014-06-24 A | 50 | 100% |  | 2014-06-05 | 2014-06-24 |  |  |  |  | 40h | 40h |  |
| 52 | 4.3.1 | Axure Prototype erstellen |  | 4d | 2014-06-05 A | 2014-06-19 A |  | 100% |  | 2014-06-05 | 2014-06-19 |  |  |  | Felix [50%]; Tobias [50%] | 32h | 32h |  |
| 53 | 4.3.2 | Prototype testen |  | 0.5d | 2014-06-12 A | 2014-06-12 A | 52 | 100% |  | 2014-06-12 | 2014-06-12 |  |  |  | Felix [50%]; Tobias [50%] | 4h | 4h |  |
| 54 | 4.3.3 | Prototype iterieren |  | 0.5d | 2014-06-17 A | 2014-06-17 A | 53 | 100% |  | 2014-06-17 | 2014-06-17 |  |  |  | Felix [50%]; Tobias [50%] | 4h | 4h |  |
| 55 | 4.3.4 | Prototype erneut testen |  | 0.5d | 2014-06-24 A | 2014-06-24 A | 54 | 100% |  | 2014-06-24 | 2014-06-24 |  |  |  |  |  |  |  |
| 56 | 4.4 | **Screendesign** |  | 7d | 2014-06-24 A | 2014-07-21 | 51 | 56% | 3.06d | 2014-06-24 | 2014-07-21 | 9.5d |  |  |  | 64h | 36h |  |
| 57 | 4.4.1 | Screendesign Startseite |  | 2d | 2014-06-24 A | 2014-07-01 |  | 75% | 0.5d | 2014-06-24 | 2014-07-01 | 1.07d | 0d |  | Felix | 16h | 12h |  |
| 58 | 4.4.2 | Screendesign Suche |  | 2d | 2014-07-01 A | 2014-07-08 | 57 | 75% | 0.5d | 2014-07-01 | 2014-07-08 | 1.5d | 0d |  | Felix | 16h | 12h |  |
| 59 | 4.4.3 | Screendesign Persönlicher Bereich |  | 2d | 2014-07-08 | 2014-07-14 | 58 |  |  | 2014-07-08 | 2014-07-14 | 5.5d | 0.25d |  | Felix | 16h |  |  |
| 60 | 4.4.4 | Screendesign Sendungsbereich |  | 2d | 2014-07-15 A | 2014-07-21 | 59 | 75% | 0.5d | 2014-07-15 | 2014-07-21 | 7.83d | 0d |  | Felix | 16h | 12h |  |
| 61 | 4.4.5 | Screendesign abgeschlossen | milestone | 0d | 2014-07-21 | 2014-07-21 | 60 |  |  | 2014-07-21 | 2014-07-21 | 9.5d |  |  | Felix |  |  |  |
| 62 | 4.5 | **Technische Umsetzung** |  | 14.75d | 2014-07-01 | 2014-08-21 | 46 |  |  | 2014-07-21 | 2014-09-05 | 0d |  |  |  | 102h |  | HTML Grundgerüst |
| 63 | 4.5.1 | **Startseite** |  | 7.25d | 2014-07-01 | 2014-07-24 | 57 |  |  | 2014-07-21 | 2014-08-14 | 0d |  |  |  | 42h |  |  |
| 64 | 4.5.1.1 | Beliebte Sendungen |  | 1d | 2014-07-01 | 2014-07-03 |  |  |  | 2014-07-21 | 2014-07-24 | 0.57d | 0d |  | Tobias [75%] | 6h |  |  |
| 65 | 4.5.1.2 | Neue Sendungen |  | 2d | 2014-07-03 | 2014-07-10 | 64 |  |  | 2014-07-28 | 2014-07-31 | 0.5d | 0.12d |  | Felix [50%]; Tobias [25%] | 12h |  |  |
| 66 | 4.5.1.3 | Kategorisierung |  | 2d | 2014-07-10 | 2014-07-17 | 65 |  |  | 2014-07-31 | 2014-08-07 | 0.38d | 0d |  | Felix [50%]; Tobias [25%] | 12h |  |  |
| 67 | 4.5.1.4 | Filterung |  | 2d | 2014-07-17 | 2014-07-22 | 66 |  |  | 2014-08-07 | 2014-08-14 | 0.62d |  |  | Felix [50%]; Tobias [25%] | 12h |  |  |
| 68 | 4.5.1.5 | Grundgerüst der Startseite abgeschlossen | milestone | 0d | 2014-07-24 | 2014-07-24 | 67 |  |  | 2014-08-14 | 2014-08-14 | 0d |  | as late as possible | Felix |  |  |  |
| 69 | 4.5.2 | Suche |  | 2d | 2014-07-08 | 2014-07-14 | 58 |  |  | 2014-07-21 | 2014-07-24 | 11.32d |  |  | Tobias | 16h |  |  |
| 70 | 4.5.3 | Sendung-Detailsseite |  | 2d | 2014-07-21 | 2014-07-24 | 60 |  |  | 2014-07-21 | 2014-07-24 | 7.5d |  |  | Tobias | 16h |  |  |
| 71 | 4.5.4 | **Persönlicher Bereich** |  | 11.25d | 2014-07-15 | 2014-08-21 | 59 |  |  | 2014-07-21 | 2014-09-05 | 0d |  |  |  | 28h |  |  |
| 72 | 4.5.4.1 | Dashboard (Übersicht) |  | 1d | 2014-07-15 | 2014-07-17 |  |  |  | 2014-07-21 | 2014-07-22 | 5.58d | 0d |  | Tobias | 8h |  |  |
| 73 | 4.5.4.2 | Reminder & Abos |  | 2d | 2014-07-17 | 2014-07-22 | 72 |  |  | 2014-07-22 | 2014-07-29 | 5.58d | 0d |  | Felix [50%] | 8h |  |  |
| 74 | 4.5.4.3 | Playlisten |  | 2d | 2014-07-22 | 2014-07-29 | 73 |  |  | 2014-07-29 | 2014-08-05 | 5.7d | 0d |  | Tobias [50%] | 8h |  |  |
| 75 | 4.5.4.4 | Merkliste |  | 1d | 2014-07-29 | 2014-07-31 | 74 |  |  | 2014-08-05 | 2014-08-11 | 5.62d |  |  | Tobias [50%] | 4h |  |  |
| 76 | 4.5.4.5 | Grundgerüst des persönlichen Bereichs abgeschlossen | milestone | 0d | 2014-08-21 | 2014-08-21 | 75 |  |  | 2014-09-05 | 2014-09-05 | 0d |  | as late as possible | Felix |  |  |  |

| ID | WBS | Task | Type | Duration | Start | Finish | Predecessors | Baseline 1 start | Baseline 1 finish | Total slack | Resources | Work | Deliverables |
| --- | --- | --- | --- | --- | --- | --- | --- | --- | --- | --- | --- | --- | --- |
| 77 | 4.6 | **Design-Umsetzung** |  | 5.83d | 2014-07-24 | 2014-08-14 |  | 2014-08-14 | 2014-09-02 | 0d |  | 46.27h | CSS |
| 78 | 4.6.1 | Umsetzung Startseite |  | 2.5d | 2014-07-24 | 2014-08-04 | 68 | 2014-08-14 | 2014-08-21 | 0d | Felix [50%]; Tobias [50%] | 20h |  |
| 79 | 4.6.2 | Umsetzung Sendung-Detailseite |  | 2d | 2014-08-04 | 2014-08-07 | 78 | 2014-08-21 | 2014-08-28 | 0d | Felix [50%]; Tobias [32.5%] | 10.28h |  |
| 80 | 4.6.3 | Umsetzung Persönlicher Bereich |  | 2d | 2014-08-07 | 2014-08-14 | 79 | 2014-08-28 | 2014-09-02 | 0d | Felix [50%]; Tobias | 16h |  |
| 81 | 4.7 | Anpassungen (Design) |  | 1d | 2014-08-14 | 2014-08-19 | 80 | 2014-09-02 | 2014-09-04 | 0d | Tobias | 8h |  |
| 82 | 4.8 | Browserspezifische Anpassungen |  | 1d | 2014-08-19 | 2014-08-21 | 81 | 2014-09-04 | 2014-09-05 | 0d | Tobias | 8h |  |
| 83 | 4.9 | Interface abgeschlossen | milestone | 0d | 2014-08-21 | 2014-08-21 | 82 | 2014-09-05 | 2014-09-05 | 0d | Tobias |  |  |
| 84 | 5 | **Testing** |  | 2.7d | 2014-08-21 | 2014-09-01 | 7, 48 | 2014-09-05 | 2014-09-10 | 0d |  | 92h |  |
| 85 | 5.1 | Softwaretests |  | 2d | 2014-08-21 | 2014-08-28 |  | 2014-09-05 | 2014-09-09 | 0d | David; Felix; Lukas; Tobias | 62h |  |
| 86 | 5.2 | Usability-Test |  | 1d | 2014-08-28 | 2014-09-01 | 85 | 2014-09-09 | 2014-09-10 | 0d | David; Felix; Lukas; Tobias | 30h |  |
