# Projektplan_06

Schedule from MS Project, 2014-06-02 to 2014-09-01, status date 2014-07-08, A marks actual dates.

## Calendars

- Standard: Mon-Fri 08:00-12:00, 13:00-17:00; Sat-Sun off. Exceptions (off unless hours are given): 2014-05-20 to 2014-08-30 (Frei, recurring).

## Resources

| Resource |
| --- |
| David |
| Felix |
| Tobias |
| Lukas |

## Schedule

| ID | WBS | Task | Type | Duration | Start | Finish | Predecessors | Complete | Remaining | Baseline start | Baseline finish | Baseline duration | Baseline 1 start | Baseline 1 finish | Total slack | Free slack | Constraint | Resources | Work | Actual work | Deliverables |
| --- | --- | --- | --- | --- | --- | --- | --- | --- | --- | --- | --- | --- | --- | --- | --- | --- | --- | --- | --- | --- | --- |
| 1 | 1 | **Wettbewerbsanalyse** |  | 3.83d | 2014-06-02 A | 2014-06-12 A |  | 100% |  | 2014-06-02 | 2014-06-12 | 3.83d | 2014-06-02 | 2014-06-12 |  |  |  |  | 20.8h | 20.8h |  |
| 2 | 1.1 | Alternativen recherchieren |  | 2d | 2014-06-02 A | 2014-06-05 A |  | 100% |  | 2014-06-02 | 2014-06-05 | 2d | 2014-06-02 | 2014-06-05 |  |  |  | Tobias [50%] | 8h | 8h | Wettbewerbsanalyse: Feature Matrix |
| 3 | 1.2 | Mediatheken explorieren |  | 2d | 2014-06-05 A | 2014-06-12 A | 2 | 100% |  | 2014-06-05 | 2014-06-12 | 2d | 2014-06-05 | 2014-06-12 |  |  |  | Tobias [50%] | 8h | 8h | Wettbewerbsanalyse: Feature Matrix |
| 4 | 1.3 | Einschätzung der Mediatheken |  | 1d | 2014-06-02 A | 2014-06-03 A |  | 100% |  | 2014-06-02 | 2014-06-03 | 1d | 2014-06-02 | 2014-06-03 |  |  |  | David [50%] | 4h | 4h | Feature Matrix Mediatheken |
| 5 | 1.4 | Featurematrix erstellen |  | 0.2d | 2014-06-12 A | 2014-06-12 A | 3, 4 | 100% |  | 2014-06-12 | 2014-06-12 | 0.2d | 2014-06-12 | 2014-06-12 |  |  |  | Tobias [50%] | 0.8h | 0.8h |  |
| 6 | 1.5 | Featurematrix abgeschlossen | milestone | 0d | 2014-06-12 A | 2014-06-12 A | 5 | 100% |  | 2014-06-12 | 2014-06-12 | 0d | 2014-06-12 | 2014-06-12 |  |  |  | Tobias |  |  |  |
| 7 | 2 | **Mediatheken einbinden** |  | 19.68d | 2014-06-12 A | 2014-08-21 | 1 | 42% | 11.32d |  |  |  | 2014-06-12 | 2014-09-05 | 0d |  |  |  | 211.4h | 91.65h |  |
| 8 | 2.1 | API's recherchieren |  | 2d | 2014-06-12 A | 2014-06-19 A |  | 100% |  |  |  |  | 2014-06-12 | 2014-06-19 |  |  |  | David [50%]; Lukas [50%] | 16h | 16h | How-To Mediatheken-Einbinden |
| 9 | 2.2 | **"ZDF" Mediathek** |  | 18d | 2014-06-19 A | 2014-08-21 | 8 | 43% | 10.24d |  |  |  | 2014-06-19 | 2014-09-05 | 0d |  |  |  | 102.4h | 41.4h |  |
| 10 | 2.2.1 | **Suchen in "ZDF"** |  | 6.95d | 2014-06-19 A | 2014-07-15 |  | 57% | 2.99d |  |  |  | 2014-06-19 | 2014-07-15 | 11.05d |  |  |  | 48h | 22.8h |  |
| 11 | 2.2.1.1 | Exploration der Suchfunktionen von "ZDF" |  | 1d | 2014-06-19 A | 2014-06-23 A |  | 100% |  |  |  |  | 2014-06-19 | 2014-06-23 |  |  |  | David [50%] | 4h | 4h |  |
| 12 | 2.2.1.2 | Entwicklung Queries |  | 3d | 2014-06-23 A | 2014-07-01 A | 11 | 100% |  |  |  |  | 2014-06-23 | 2014-07-01 |  |  |  | David [50%] | 12h | 12h |  |
| 13 | 2.2.1.3 | Parsen der Ergebnisse |  | 2d | 2014-07-01 A | 2014-07-08 | 12 | 75% | 0.5d |  |  |  | 2014-07-01 | 2014-07-08 | 0.2d | 0d |  | David [50%] | 8h | 6h |  |
| 14 | 2.2.1.4 | Filterung der Suchergebnisse |  | 2d | 2014-07-08 | 2014-07-15 | 13 |  |  |  |  |  |  |  | 11.05d |  |  | David | 16h |  |  |
| 15 | 2.2.1.5 | Darstellung der Ergebnisse |  | 2d | 2014-07-08 A | 2014-07-15 | 13 | 10% | 1.8d |  |  |  | 2014-07-08 | 2014-07-15 | 0d |  |  | Lukas [50%] | 8h | 0.8h |  |
| 16 | 2.2.1.6 | Suchen in Mediatheken abgeschlossen | milestone | 0d | 2014-07-15 | 2014-07-15 | 15 |  |  |  |  |  | 2014-07-15 | 2014-07-15 | 0d |  |  | David |  |  |  |
| 17 | 2.2.2 | **Browsing in "ZDF"** |  | 18d | 2014-06-19 A | 2014-08-21 | 8 | 15% | 15.28d |  |  |  | 2014-06-19 | 2014-09-05 | 0d |  |  |  | 22.4h | 4.4h |  |
| 18 | 2.2.2.1 | Exploration der IA der Mediathek |  | 0.3d | 2014-06-19 A | 2014-06-19 A |  | 100% |  |  |  |  | 2014-06-19 | 2014-06-30 |  |  |  | Lukas | 2.4h | 2.4h |  |
| 19 | 2.2.2.2 | Entwicklung Queries |  | 3d | 2014-08-05 A | 2014-08-14 | 18 | 10% | 2.7d |  |  |  | 2014-08-28 | 2014-09-03 | 0d |  | as late as possible | Lukas [50%] | 12h | 1.2h |  |
| 20 | 2.2.2.3 | Parsen der Ergebnisse |  | 2d | 2014-08-14 A | 2014-08-21 | 19 | 10% | 1.8d |  |  |  | 2014-09-03 | 2014-09-05 | 0d |  |  | David [50%] | 8h | 0.8h |  |
| 21 | 2.2.2.4 | Browsing in Mediatheken abgeschlossen | milestone | 0d | 2014-08-21 A | 2014-08-21 | 20 | 10% | 0d |  |  |  | 2014-09-05 | 2014-09-05 | 0d |  |  | Tobias |  |  |  |
| 22 | 2.2.3 | **Streamen von "ZDF"** |  | 6.25d | 2014-07-15 A | 2014-08-05 | 16 | 46% | 3.35d |  |  |  | 2014-07-15 | 2014-08-05 | 0.97d | 0d |  |  | 28h | 13h |  |
| 23 | 2.2.3.1 | Streaming |  | 6d | 2014-07-15 A | 2014-07-31 |  | 50% | 3d |  |  |  | 2014-07-15 | 2014-07-31 | 0.8d | 0d |  | David [50%] | 24h | 12h |  |
| 24 | 2.2.3.2 | Dateitypen / Player & Grundlagen |  | 1d | 2014-07-31 A | 2014-08-05 | 23 | 25% | 0.75d |  |  |  | 2014-07-31 | 2014-08-05 | 0.97d |  |  | David [50%] | 4h | 1h |  |
| 25 | 2.2.4 | Streaming in Seite einbinden |  | 1d | 2014-08-05 A | 2014-08-07 | 22 | 30% | 0.7d |  |  |  | 2014-08-05 | 2014-08-07 | 3.67d |  |  | Lukas [50%] | 4h | 1.2h |  |
| 26 | 2.2.5 | "ZDF" Mediathek eingebunden | milestone | 0d | 2014-08-07 A | 2014-08-07 A | 25 | 100% |  |  |  |  | 2014-08-07 | 2014-08-07 |  |  |  | Lukas |  |  |  |

| ID | WBS | Task | Type | Duration | Start | Finish | Predecessors | Complete | Remaining | Baseline start | Baseline finish | Baseline duration | Baseline 1 start | Baseline 1 finish | Total slack | Free slack | Constraint | Resources | Work | Actual work |
| --- | --- | --- | --- | --- | --- | --- | --- | --- | --- | --- | --- | --- | --- | --- | --- | --- | --- | --- | --- | --- |
| 27 | 2.3 | **"ARD" Mediathek** |  | 16.32d | 2014-06-19 A | 2014-08-14 | 8 | 36% | 10.52d |  |  |  | 2014-06-19 | 2014-09-03 | 1.12d | 0d |  |  | 85h | 30.25h |
| 28 | 2.3.1 | **Suchen in "ARD"** |  | 7.4d | 2014-06-19 A | 2014-07-15 |  | 43% | 4.22d |  |  |  | 2014-06-19 | 2014-07-15 | 10.05d |  |  |  | 23.8h | 13.65h |
| 29 | 2.3.1.1 | Exploration der Suchfunktionen von "ARD" |  | 1d | 2014-06-19 A | 2014-06-26 A |  | 100% |  |  |  |  | 2014-06-19 | 2014-06-23 |  |  |  | Lukas [50%] | 4h | 4h |
| 30 | 2.3.1.2 | Entwicklung Queries |  | 0.95d | 2014-06-23 A | 2014-07-03 | 29 | 75% | 0.24d |  |  |  | 2014-06-23 | 2014-07-01 | 1.12d | 0d |  | Lukas [50%] | 3.8h | 2.85h |
| 31 | 2.3.1.3 | Parsen der Ergebnisse |  | 2d | 2014-07-03 A | 2014-07-08 | 30 | 75% | 0.5d |  |  |  | 2014-07-01 | 2014-07-08 | 0.1d | 0d |  | Lukas [50%] | 8h | 6h |
| 32 | 2.3.1.4 | Filterung der Suchergebnisse |  | 2d | 2014-07-08 | 2014-07-15 | 31 |  |  |  |  |  |  |  | 10.05d |  |  |  |  |  |
| 33 | 2.3.1.5 | Darstellung der Ergebnisse |  | 2d | 2014-07-08 A | 2014-07-15 | 31 | 10% | 1.8d |  |  |  | 2014-07-08 | 2014-07-15 | 1.8d | 0d |  | Lukas [50%] | 8h | 0.8h |
| 34 | 2.3.1.6 | Suchen in Mediatheken abgeschlossen | milestone | 0d | 2014-07-15 | 2014-07-15 | 33 |  |  |  |  |  | 2014-07-15 | 2014-07-15 | 1.8d |  |  | Lukas |  |  |
| 35 | 2.3.2 | **Browsing in "Das Erste"** |  | 9.5d | 2014-06-19 A | 2014-07-22 |  | 3% | 9.23d |  |  |  | 2014-06-19 | 2014-09-03 | 7.45d |  |  |  | 29.2h | 0.6h |
| 36 | 2.3.2.1 | Exploration der IA's der Mediathek |  | 0.3d | 2014-06-19 A | 2014-06-19 |  | 50% | 0.15d |  |  |  | 2014-06-19 | 2014-06-23 | 12.12d | 4.75d |  | Lukas [50%] | 1.2h | 0.6h |
| 37 | 2.3.2.2 | Entwicklung Queries |  | 3d | 2014-07-08 | 2014-07-17 | 36 |  |  |  |  |  | 2014-08-21 | 2014-09-01 | 7.2d | 0d | start no earlier than 2014-07-08 | Lukas [50%] | 12h |  |
| 38 | 2.3.2.3 | Parsen der Ergebnisse |  | 2d | 2014-07-17 | 2014-07-22 | 37 |  |  |  |  |  | 2014-09-01 | 2014-09-03 | 7.2d | 0d |  | Lukas | 16h |  |
| 39 | 2.3.2.4 | Browsing in Mediathek abgeschlossen | milestone | 0d | 2014-07-22 | 2014-07-22 | 38 |  |  |  |  |  | 2014-09-03 | 2014-09-03 | 7.45d |  |  | Lukas |  |  |
| 40 | 2.3.3 | **Streamen von "Das Erste"** |  | 6.25d | 2014-07-22 A | 2014-08-12 | 34 | 50% | 3.12d |  |  |  | 2014-07-15 | 2014-08-05 | 0.62d | 0d |  |  | 28h | 14h |
| 41 | 2.3.3.1 | Streaming |  | 6d | 2014-07-22 A | 2014-08-07 |  | 50% | 3d |  |  |  | 2014-07-15 | 2014-07-31 | 0d |  | start no earlier than 2014-07-22 | Lukas [50%] | 24h | 12h |
| 42 | 2.3.3.2 | Dateitypen / Player & Grundlagen |  | 1d | 2014-08-07 A | 2014-08-12 | 41 | 50% | 0.5d |  |  |  | 2014-07-31 | 2014-08-05 | 0.62d |  |  | Lukas [50%] | 4h | 2h |
| 43 | 2.3.4 | Streaming in Seite einbinden |  | 1d | 2014-08-12 A | 2014-08-14 | 40 | 50% | 0.5d |  |  |  | 2014-08-05 | 2014-08-07 | 0.62d | 0d |  | Lukas [50%] | 4h | 2h |
| 44 | 2.3.5 | "Das Erste" Mediathek eingebunden | milestone | 0d | 2014-08-14 A | 2014-08-14 | 43 | 50% | 0d |  |  |  | 2014-08-07 | 2014-08-07 | 0.62d |  |  | Lukas |  |  |
| 45 | 2.4 | Kombination Suchalgorithmen |  | 2d | 2014-08-14 A | 2014-08-21 | 27 | 50% | 1d |  |  |  | 2014-09-03 | 2014-09-05 | 0d |  |  | Lukas [50%] | 8h | 4h |
| 46 | 3 | **Grundgerüst der Seite** |  | 3.5d | 2014-06-02 A | 2014-06-12 A |  | 100% |  | 2014-06-02 | 2014-06-12 | 3.5d | 2014-06-02 | 2014-06-12 |  |  |  |  | 18h | 18h |
| 47 | 3.1 | Datenbankschema |  | 0.5d | 2014-06-02 A | 2014-06-02 A |  | 100% |  | 2014-06-02 | 2014-06-02 | 0.5d | 2014-06-02 | 2014-06-02 |  |  |  | Lukas [50%] | 2h | 2h |
| 48 | 3.2 | PHP Framework |  | 2.5d | 2014-06-03 A | 2014-06-10 A | 47 | 100% |  | 2014-06-03 | 2014-06-09 | 2d | 2014-06-03 | 2014-06-10 |  |  |  | Lukas [50%] | 10h | 10h |
| 49 | 3.3 | User Login |  | 1.5d | 2014-06-09 A | 2014-06-12 A | 48 | 100% |  | 2014-06-09 | 2014-06-12 | 1.5d | 2014-06-09 | 2014-06-12 |  |  |  | Lukas [50%] | 6h | 6h |
| 50 | 4 | **Interface** |  | 23.5d | 2014-06-02 A | 2014-08-21 |  | 28% | 16.86d | 2014-06-02 | 2014-09-04 | 29d | 2014-06-02 | 2014-09-05 | 0d |  |  |  | 308.77h | 108h |
| 51 | 4.1 | Sketching |  | 2d | 2014-06-02 A | 2014-06-05 A |  | 100% |  | 2014-06-02 | 2014-06-05 | 2d | 2014-06-02 | 2014-06-05 |  |  |  | David [50%]; Felix [50%]; Lukas [50%]; Tobias [50%] | 32h | 32h |
| 52 | 4.2 | UI Entwürfe abgschlossen | milestone | 0d | 2014-06-05 A | 2014-06-05 A | 51 | 100% |  | 2014-06-05 | 2014-06-05 | 0d | 2014-06-05 | 2014-06-05 |  |  |  | Tobias |  |  |

| ID | WBS | Task | Type | Duration | Start | Finish | Predecessors | Complete | Remaining | Baseline 1 start | Baseline 1 finish | Total slack | Free slack | Constraint | Resources | Work | Actual work | Deliverables |
| --- | --- | --- | --- | --- | --- | --- | --- | --- | --- | --- | --- | --- | --- | --- | --- | --- | --- | --- |
| 53 | 4.3 | **Prototyping** |  | 4.62d | 2014-06-05 A | 2014-06-24 A | 52 | 100% |  | 2014-06-05 | 2014-06-24 |  |  |  |  | 40h | 40h |  |
| 54 | 4.3.1 | Axure Prototype erstellen |  | 4d | 2014-06-05 A | 2014-06-19 A |  | 100% |  | 2014-06-05 | 2014-06-19 |  |  |  | Felix [50%]; Tobias [50%] | 32h | 32h |  |
| 55 | 4.3.2 | Prototype testen |  | 0.5d | 2014-06-12 A | 2014-06-12 A | 54 | 100% |  | 2014-06-12 | 2014-06-12 |  |  |  | Felix [50%]; Tobias [50%] | 4h | 4h |  |
| 56 | 4.3.3 | Prototype iterieren |  | 0.5d | 2014-06-17 A | 2014-06-17 A | 55 | 100% |  | 2014-06-17 | 2014-06-17 |  |  |  | Felix [50%]; Tobias [50%] | 4h | 4h |  |
| 57 | 4.3.4 | Prototype erneut testen |  | 0.5d | 2014-06-24 A | 2014-06-24 A | 56 | 100% |  | 2014-06-24 | 2014-06-24 |  |  |  |  |  |  |  |
| 58 | 4.4 | **Screendesign** |  | 7.5d | 2014-06-24 A | 2014-07-22 | 53 | 47% | 3.95d | 2014-06-24 | 2014-07-21 | 9d |  |  |  | 72.5h | 36h |  |
| 59 | 4.4.1 | Screendesign Startseite |  | 2.5d | 2014-06-24 A | 2014-07-03 |  | 60% | 1d | 2014-06-24 | 2014-07-01 | 0.45d | 0d |  | Felix [50%]; Tobias [50%] | 18h | 12h |  |
| 60 | 4.4.2 | Screendesign Suche |  | 2.5d | 2014-07-01 A | 2014-07-08 | 59 | 60% | 1d | 2014-07-01 | 2014-07-08 | 1d | 0d |  | Felix [50%]; Tobias [50%] | 20h | 12h |  |
| 61 | 4.4.3 | Screendesign Persönlicher Bereich |  | 2d | 2014-07-08 | 2014-07-15 | 60 |  |  | 2014-07-08 | 2014-07-14 | 1d | 0d |  | Felix [50%]; Tobias [50%] | 16h |  |  |
| 62 | 4.4.4 | Screendesign Sendungsbereich |  | 2.5d | 2014-07-15 A | 2014-07-22 | 61 | 60% | 1d | 2014-07-15 | 2014-07-21 | 7.33d | 0d |  | Felix [50%]; Tobias [50%] | 18.5h | 12h |  |
| 63 | 4.4.5 | Screendesign abgeschlossen | milestone | 0d | 2014-07-22 | 2014-07-22 | 62 |  |  | 2014-07-21 | 2014-07-21 | 9d |  |  | Felix |  |  |  |
| 64 | 4.5 | **Technische Umsetzung** |  | 14.12d | 2014-07-03 | 2014-08-21 | 48 |  |  | 2014-07-21 | 2014-09-05 | 0d |  |  |  | 102h |  | HTML Grundgerüst |
| 65 | 4.5.1 | **Startseite** |  | 6.62d | 2014-07-03 | 2014-07-24 | 59 |  |  | 2014-07-21 | 2014-08-14 | 0d |  |  |  | 42h |  |  |
| 66 | 4.5.1.1 | Beliebte Sendungen |  | 1d | 2014-07-03 | 2014-07-07 |  |  |  | 2014-07-21 | 2014-07-24 | 0.45d | 0d |  | Tobias [75%] | 6h |  |  |
| 67 | 4.5.1.2 | Neue Sendungen |  | 2d | 2014-07-07 | 2014-07-10 | 66 |  |  | 2014-07-28 | 2014-07-31 | 0d |  |  | Felix [50%]; Tobias [25%] | 12h |  |  |
| 68 | 4.5.1.3 | Kategorisierung |  | 2d | 2014-07-14 | 2014-07-17 | 67 |  |  | 2014-07-31 | 2014-08-07 | 0d |  |  | Felix [50%]; Tobias [25%] | 12h |  |  |
| 69 | 4.5.1.4 | Filterung |  | 2d | 2014-07-17 | 2014-07-24 | 68 |  |  | 2014-08-07 | 2014-08-14 | 0.12d |  |  | Felix [50%]; Tobias [25%] | 12h |  |  |
| 70 | 4.5.1.5 | Grundgerüst der Startseite abgeschlossen | milestone | 0d | 2014-07-24 | 2014-07-24 | 69 |  |  | 2014-08-14 | 2014-08-14 | 0d |  | as late as possible | Felix |  |  |  |
| 71 | 4.5.2 | Suche |  | 2d | 2014-07-08 | 2014-07-15 | 60 |  |  | 2014-07-21 | 2014-07-24 | 10.75d |  |  | Tobias | 16h |  |  |
| 72 | 4.5.3 | Sendung-Detailsseite |  | 2d | 2014-07-22 | 2014-07-28 | 62 |  |  | 2014-07-21 | 2014-07-24 | 7.33d |  |  | Tobias | 16h |  |  |
| 73 | 4.5.4 | **Persönlicher Bereich** |  | 10.75d | 2014-07-15 | 2014-08-21 | 61 |  |  | 2014-07-21 | 2014-09-05 | 0d |  |  |  | 28h |  |  |
| 74 | 4.5.4.1 | Dashboard (Übersicht) |  | 1d | 2014-07-15 | 2014-07-17 |  |  |  | 2014-07-21 | 2014-07-22 | 5.08d | 0d |  | Tobias | 8h |  |  |
| 75 | 4.5.4.2 | Reminder & Abos |  | 2d | 2014-07-17 | 2014-07-24 | 74 |  |  | 2014-07-22 | 2014-07-29 | 5.08d | 0.12d |  | Felix [50%] | 8h |  |  |
| 76 | 4.5.4.3 | Playlisten |  | 2d | 2014-07-24 | 2014-07-31 | 75 |  |  | 2014-07-29 | 2014-08-05 | 5.08d | 0d |  | Tobias [50%] | 8h |  |  |
| 77 | 4.5.4.4 | Merkliste |  | 1d | 2014-07-31 | 2014-08-04 | 76 |  |  | 2014-08-05 | 2014-08-11 | 5.08d |  |  | Tobias [50%] | 4h |  |  |
| 78 | 4.5.4.5 | Grundgerüst des persönlichen Bereichs abgeschlossen | milestone | 0d | 2014-08-21 | 2014-08-21 | 77 |  |  | 2014-09-05 | 2014-09-05 | 0d |  | as late as possible | Felix |  |  |  |

| ID | WBS | Task | Type | Duration | Start | Finish | Predecessors | Baseline 1 start | Baseline 1 finish | Total slack | Resources | Work | Deliverables |
| --- | --- | --- | --- | --- | --- | --- | --- | --- | --- | --- | --- | --- | --- |
| 79 | 4.6 | **Design-Umsetzung** |  | 5.83d | 2014-07-24 | 2014-08-14 |  | 2014-08-14 | 2014-09-02 | 0d |  | 46.27h | CSS |
| 80 | 4.6.1 | Umsetzung Startseite |  | 2.5d | 2014-07-24 | 2014-08-04 | 70 | 2014-08-14 | 2014-08-21 | 0d | Felix [50%]; Tobias [50%] | 20h |  |
| 81 | 4.6.2 | Umsetzung Sendung-Detailseite |  | 2d | 2014-08-04 | 2014-08-07 | 80 | 2014-08-21 | 2014-08-28 | 0d | Felix [50%]; Tobias [32.5%] | 10.28h |  |
| 82 | 4.6.3 | Umsetzung Persönlicher Bereich |  | 2d | 2014-08-07 | 2014-08-14 | 81 | 2014-08-28 | 2014-09-02 | 0d | Felix [50%]; Tobias | 16h |  |
| 83 | 4.7 | Anpassungen (Design) |  | 1d | 2014-08-14 | 2014-08-19 | 82 | 2014-09-02 | 2014-09-04 | 0d | Tobias | 8h |  |
| 84 | 4.8 | Browserspezifische Anpassungen |  | 1d | 2014-08-19 | 2014-08-21 | 83 | 2014-09-04 | 2014-09-05 | 0d | Tobias | 8h |  |
| 85 | 4.9 | Interface abgeschlossen | milestone | 0d | 2014-08-21 | 2014-08-21 | 84 | 2014-09-05 | 2014-09-05 | 0d | Tobias |  |  |
| 86 | 5 | **Testing** |  | 2.7d | 2014-08-21 | 2014-09-01 | 7, 50 | 2014-09-05 | 2014-09-10 | 0d |  | 92h |  |
| 87 | 5.1 | Softwaretests |  | 2d | 2014-08-21 | 2014-08-28 |  | 2014-09-05 | 2014-09-09 | 0d | David; Felix; Lukas; Tobias | 62h |  |
| 88 | 5.2 | Usability-Test |  | 1d | 2014-08-28 | 2014-09-01 | 87 | 2014-09-09 | 2014-09-10 | 0d | David; Felix; Lukas; Tobias | 30h |  |
