# Projektplan_09

Schedule from MS Project, 2014-06-02 to 2014-09-08, status date 2014-07-21, A marks actual dates.

## Calendars

- Standard: Mon-Fri 08:00-12:00, 13:00-17:00; Sat-Sun off. Exceptions (off unless hours are given): 2014-05-20 to 2014-08-30 (Frei, recurring).

## Resources

| Resource |
| --- |
| David |
| Felix |
| Tobias |
| Lukas |

## Schedule

| ID | WBS | Task | Type | Duration | Start | Finish | Predecessors | Complete | Remaining | Baseline start | Baseline finish | Baseline duration | Baseline 1 start | Baseline 1 finish | Total slack | Free slack | Constraint | Resources | Work | Actual work | Deliverables | Übergeordneter Vorgang |
| --- | --- | --- | --- | --- | --- | --- | --- | --- | --- | --- | --- | --- | --- | --- | --- | --- | --- | --- | --- | --- | --- | --- |
| 1 | 1 | **Wettbewerbsanalyse** |  | 3.83d | 2014-06-02 A | 2014-06-12 A |  | 100% |  | 2014-06-02 | 2014-06-12 | 3.83d | 2014-06-02 | 2014-06-12 |  |  |  |  | 20.8h | 20.8h |  |  |
| 2 | 1.1 | Alternativen recherchieren |  | 2d | 2014-06-02 A | 2014-06-05 A |  | 100% |  | 2014-06-02 | 2014-06-05 | 2d | 2014-06-02 | 2014-06-05 |  |  |  | Tobias [50%] | 8h | 8h | Wettbewerbsanalyse: Feature Matrix | Wettbewerbsanalyse |
| 3 | 1.2 | Mediatheken explorieren |  | 2d | 2014-06-05 A | 2014-06-12 A | 2 | 100% |  | 2014-06-05 | 2014-06-12 | 2d | 2014-06-05 | 2014-06-12 |  |  |  | Tobias [50%] | 8h | 8h | Wettbewerbsanalyse: Feature Matrix |  |
| 4 | 1.3 | Einschätzung der Mediatheken |  | 1d | 2014-06-02 A | 2014-06-03 A |  | 100% |  | 2014-06-02 | 2014-06-03 | 1d | 2014-06-02 | 2014-06-03 |  |  |  | David [50%] | 4h | 4h | Feature Matrix Mediatheken |  |
| 5 | 1.4 | Featurematrix erstellen |  | 0.2d | 2014-06-12 A | 2014-06-12 A | 3, 4 | 100% |  | 2014-06-12 | 2014-06-12 | 0.2d | 2014-06-12 | 2014-06-12 |  |  |  | Tobias [50%] | 0.8h | 0.8h |  |  |
| 6 | 1.5 | Featurematrix abgeschlossen | milestone | 0d | 2014-06-12 A | 2014-06-12 A | 5 | 100% |  | 2014-06-12 | 2014-06-12 | 0d | 2014-06-12 | 2014-06-12 |  |  |  | Tobias |  |  |  |  |
| 7 | 2 | **Mediatheken einbinden** |  | 24.36d | 2014-06-12 A | 2014-09-03 | 1 | 41% | 14.27d |  |  |  | 2014-06-12 | 2014-09-05 | 0.57d |  |  |  | 211.64h | 89.4h |  |  |
| 8 | 2.1 | API's recherchieren |  | 2d | 2014-06-12 A | 2014-06-19 A |  | 100% |  |  |  |  | 2014-06-12 | 2014-06-19 |  |  |  | David [50%]; Lukas [50%] | 16h | 16h | How-To Mediatheken-Einbinden | Mediatheken einbinden |
| 9 | 2.2 | **"ZDF" Mediathek** |  | 18d | 2014-06-19 A | 2014-08-21 | 8 | 51% | 8.79d |  |  |  | 2014-06-19 | 2014-09-05 | 2.95d | 0d |  |  | 60.4h | 27.4h |  |  |
| 10 | 2.2.1 | **Suchen in "ZDF"** |  | 6.95d | 2014-06-19 A | 2014-07-15 |  | 69% | 2.14d |  |  |  | 2014-06-19 | 2014-07-15 | 14d |  |  |  | 34h | 18h |  |  |
| 11 | 2.2.1.1 | Exploration der Suchfunktionen von "ZDF" |  | 0.5d | 2014-06-19 A | 2014-06-19 A |  | 100% |  |  |  |  | 2014-06-19 | 2014-06-23 |  |  |  | David [50%] | 2h | 2h |  | "ZDF" Mediathek |
| 12 | 2.2.1.2 | Entwicklung Queries |  | 1.5d | 2014-06-23 A | 2014-06-26 A | 11 | 100% |  |  |  |  | 2014-06-23 | 2014-07-01 |  |  |  | David [50%] | 6h | 6h |  |  |
| 13 | 2.2.1.3 | Parsen der Ergebnisse |  | 1.5d | 2014-06-26 A | 2014-07-01 A | 12 | 100% |  |  |  |  | 2014-07-01 | 2014-07-08 |  |  |  | David [50%] | 6h | 6h |  | "ZDF" Mediathek |
| 14 | 2.2.1.4 | Filterung der Suchergebnisse |  | 2d | 2014-07-01 | 2014-07-08 | 13 |  |  |  |  |  |  |  | 13d |  |  | David | 16h |  |  | "ZDF" Mediathek |
| 15 | 2.2.1.5 | Darstellung der Ergebnisse |  | 1d | 2014-07-08 A | 2014-07-10 A | 13 | 100% |  |  |  |  | 2014-07-08 | 2014-07-15 |  |  |  | Lukas [50%] | 4h | 4h |  |  |
| 16 | 2.2.1.6 | Suchen in "ZDF" Mediathek abgeschlossen | milestone | 0d | 2014-07-15 A | 2014-07-15 A | 15 | 100% |  |  |  |  | 2014-07-15 | 2014-07-15 |  |  |  | David |  |  |  |  |
| 17 | 2.2.2 | **Browsing in "ZDF"** |  | 18d | 2014-06-19 A | 2014-08-21 | 8 | 22% | 14.09d |  |  |  | 2014-06-19 | 2014-09-05 | 2.95d |  |  |  | 10.4h | 3.2h |  |  |
| 18 | 2.2.2.1 | Exploration der IA der Mediathek |  | 0.3d | 2014-06-19 A | 2014-06-19 A |  | 100% |  |  |  |  | 2014-06-19 | 2014-06-30 |  |  |  | Lukas | 2.4h | 2.4h |  |  |
| 19 | 2.2.2.2 | Entwicklung Queries |  | 1d | 2014-08-12 | 2014-08-14 | 18 |  |  |  |  |  | 2014-08-28 | 2014-09-03 | 0d |  | as late as possible | David [50%] | 4h |  |  |  |
| 20 | 2.2.2.3 | Parsen der Ergebnisse |  | 1d | 2014-08-14 A | 2014-08-19 | 19 | 20% | 0.8d |  |  |  | 2014-09-03 | 2014-09-05 | 4d | 1.05d |  | David [50%] | 4h | 0.8h |  |  |
| 21 | 2.2.2.4 | Browsing in "ZDF" Mediatheken abgeschlossen | milestone | 0d | 2014-08-21 A | 2014-08-21 | 20 | 10% | 0d |  |  |  | 2014-09-05 | 2014-09-05 | 2.95d |  |  | David |  |  |  |  |
| 22 | 2.2.3 | **Streamen von "ZDF"** |  | 3.55d | 2014-07-15 A | 2014-07-28 | 16 | 42% | 2.07d |  |  |  | 2014-07-15 | 2014-08-05 | 0.93d | 0.5d |  |  | 12h | 5h |  |  |
| 23 | 2.2.3.1 | Streaming |  | 2d | 2014-07-15 A | 2014-07-21 |  | 50% | 1d |  |  |  | 2014-07-15 | 2014-07-31 | 1.5d | 1d |  | David [50%] | 8h | 4h |  |  |
| 24 | 2.2.3.2 | Dateitypen / Player & Grundlagen |  | 1d | 2014-07-24 A | 2014-07-28 | 23 | 25% | 0.75d |  |  |  | 2014-07-31 | 2014-08-05 | 0.93d |  |  | David [50%] | 4h | 1h |  |  |
| 25 | 2.2.4 | Streaming in Seite einbinden |  | 1d | 2014-07-29 A | 2014-07-31 | 22 | 30% | 0.7d |  |  |  | 2014-08-05 | 2014-08-07 | 2.08d |  |  | Lukas [50%] | 4h | 1.2h |  |  |
| 26 | 2.2.5 | "ZDF" Mediathek eingebunden | milestone | 0d | 2014-08-07 A | 2014-08-07 | 25 | 75% | 0d |  |  |  | 2014-08-07 | 2014-08-07 | 0d |  |  | David |  |  |  |  |

| ID | WBS | Task | Type | Duration | Start | Finish | Predecessors | Complete | Remaining | Baseline 1 start | Baseline 1 finish | Total slack | Free slack | Constraint | Resources | Work | Actual work | Übergeordneter Vorgang |
| --- | --- | --- | --- | --- | --- | --- | --- | --- | --- | --- | --- | --- | --- | --- | --- | --- | --- | --- |
| 27 | 2.3 | **"ARD" Mediathek** |  | 12.5d | 2014-06-19 A | 2014-08-01 | 8 | 63% | 4.61d | 2014-06-19 | 2014-09-03 | 8.45d | 3.83d |  |  | 51h | 32.2h |  |
| 28 | 2.3.1 | **Suchen in "ARD"** |  | 7.15d | 2014-06-19 A | 2014-07-15 |  | 54% | 3.28d | 2014-06-19 | 2014-07-15 | 0.35d |  |  |  | 21.8h | 11.8h |  |
| 29 | 2.3.1.1 | Exploration der Suchfunktionen von "ARD" |  | 0.5d | 2014-06-19 A | 2014-06-24 A |  | 100% |  | 2014-06-19 | 2014-06-23 |  |  |  | Lukas [50%] | 2h | 2h | "ARD" Mediathek |
| 30 | 2.3.1.2 | Entwicklung Queries |  | 0.95d | 2014-06-23 A | 2014-07-03 A | 29 | 100% |  | 2014-06-23 | 2014-07-01 |  |  |  | Lukas [50%] | 3.8h | 3.8h | "ARD" Mediathek |
| 31 | 2.3.1.3 | Parsen der Ergebnisse |  | 1d | 2014-07-03 A | 2014-07-07 A | 30 | 100% |  | 2014-07-01 | 2014-07-08 |  |  |  | Lukas [50%] | 4h | 4h |  |
| 32 | 2.3.1.4 | Filterung der Suchergebnisse |  | 2d | 2014-07-07 | 2014-07-10 | 31 |  |  |  |  | 0d |  |  | Lukas [50%] | 8h |  | "ARD" Mediathek |
| 33 | 2.3.1.5 | Darstellung der Ergebnisse |  | 1d | 2014-07-08 A | 2014-07-14 | 32 | 50% | 0.5d | 2014-07-08 | 2014-07-15 | 1d | 0.65d |  | Lukas [50%] | 4h | 2h |  |
| 34 | 2.3.1.6 | Suchen in "ARD" Mediathek abgeschlossen | milestone | 0d | 2014-07-15 A | 2014-07-15 | 33 | 35% | 0d | 2014-07-15 | 2014-07-15 | 0.35d |  |  | Lukas |  |  |  |
| 35 | 2.3.2 | **Browsing in "ARD"** |  | 9.5d | 2014-06-19 A | 2014-07-22 |  | 99% | 0d | 2014-06-19 | 2014-09-03 | 11.45d |  |  |  | 13.2h | 13.2h |  |
| 36 | 2.3.2.1 | Exploration der IA's der Mediathek |  | 0.3d | 2014-06-19 A | 2014-06-19 A |  | 100% |  | 2014-06-19 | 2014-06-23 |  |  |  | Lukas [50%] | 1.2h | 1.2h |  |
| 37 | 2.3.2.2 | Entwicklung Queries |  | 1.5d | 2014-07-08 A | 2014-07-14 A | 36 | 100% |  | 2014-08-21 | 2014-09-01 |  |  | start no earlier than 2014-07-08 | Lukas [50%] | 6h | 6h |  |
| 38 | 2.3.2.3 | Parsen der Ergebnisse |  | 1.5d | 2014-07-17 A | 2014-07-22 A | 37 | 100% |  | 2014-09-01 | 2014-09-03 |  |  |  | Lukas [50%] | 6h | 6h |  |
| 39 | 2.3.2.4 | Browsing in "ARD" Mediathek abgeschlossen | milestone | 0d | 2014-07-22 A | 2014-07-22 | 38 | 50% | 0d | 2014-09-03 | 2014-09-03 | 11.45d |  |  | Lukas |  |  |  |
| 40 | 2.3.3 | **Streamen von "ARD"** |  | 3d | 2014-07-17 A | 2014-07-24 | 34 | 50% | 1.5d | 2014-07-15 | 2014-08-05 | 0.5d | 0d |  |  | 12h | 6h |  |
| 41 | 2.3.3.1 | Streaming |  | 2d | 2014-07-17 A | 2014-07-22 |  | 75% | 0.5d | 2014-07-15 | 2014-07-31 | 1.05d | 0d |  | Lukas [50%] | 8h | 6h |  |
| 42 | 2.3.3.2 | Dateitypen / Player & Grundlagen |  | 1d | 2014-07-22 | 2014-07-24 | 41 |  |  | 2014-07-31 | 2014-08-05 | 0.5d |  |  | Lukas [50%] | 4h |  |  |
| 43 | 2.3.4 | Streaming in Seite einbinden |  | 1d | 2014-07-29 A | 2014-07-31 | 40 | 30% | 0.7d | 2014-08-05 | 2014-08-07 | 0.62d |  |  | Lukas [50%] | 4h | 1.2h |  |
| 44 | 2.3.5 | "ARD" Mediathek eingebunden | milestone | 0d | 2014-08-01 A | 2014-08-01 | 43 | 50% | 0d | 2014-08-07 | 2014-08-07 | 0d |  |  | Lukas |  |  |  |
| 45 | 2.4 | **"BR" Mediathek** |  | 3.31d | 2014-08-04 A | 2014-08-14 | 44 | 45% | 1.81d |  |  | 0d |  |  |  | 20.24h | 8.8h |  |
| 46 | 2.4.1 | Suchen in "BR" |  | 1.5d | 2014-08-04 A | 2014-08-07 A |  | 100% |  |  |  |  |  |  | Lukas [50%] | 6h | 6h |  |
| 47 | 2.4.2 | Neue Sendungen in "BR" |  | 0.1d | 2014-08-07 A | 2014-08-07 A | 46 | 100% |  |  |  |  |  |  | Lukas [50%] | 0.4h | 0.4h |  |
| 48 | 2.4.3 | Rubriken in "BR" |  | 0.1d | 2014-08-04 A | 2014-08-05 A | 47 | 100% |  |  |  |  |  |  | Lukas [50%] | 0.4h | 0.4h |  |
| 49 | 2.4.4 | Filtern in "BR" |  | 2d | 2014-08-05 | 2014-08-11 | 48 |  |  |  |  | 0.5d | 0d |  | Lukas [50%] | 8h |  |  |
| 50 | 2.4.5 | Streamen von "BR" |  | 1d | 2014-08-11 A | 2014-08-12 | 49 | 50% | 0.5d |  |  | 0d |  |  | Lukas [50%] | 4h | 2h |  |
| 51 | 2.4.6 | "BR" Mediathek eingebunden |  | 0.18d | 2014-08-12 A | 2014-08-14 | 50 |  | 0.18d |  |  | 0d |  |  | Lukas | 1.44h |  |  |

| ID | WBS | Task | Type | Duration | Start | Finish | Predecessors | Complete | Remaining | Baseline start | Baseline finish | Baseline duration | Baseline 1 start | Baseline 1 finish | Total slack | Free slack | Resources | Work | Actual work | Übergeordneter Vorgang |
| --- | --- | --- | --- | --- | --- | --- | --- | --- | --- | --- | --- | --- | --- | --- | --- | --- | --- | --- | --- | --- |
| 52 | 2.5 | **"WDR" Mediathek** |  | 6.88d | 2014-08-14 A | 2014-09-03 | 51 | 10% | 6.19d |  |  |  |  |  | 0.57d |  |  | 30h | 3h |  |
| 53 | 2.5.1 | Suchen in "WDR" |  | 1.5d | 2014-08-14 A | 2014-08-19 |  | 50% | 0.75d |  |  |  |  |  | 0.57d | 0d | Lukas [50%] | 6h | 3h |  |
| 54 | 2.5.2 | Neue Sendungen in "WDR" |  | 1.5d | 2014-08-19 | 2014-08-21 | 53 |  |  |  |  |  |  |  | 0d |  | Lukas [50%] | 6h |  |  |
| 55 | 2.5.3 | Rubriken in "WDR" |  | 1.5d | 2014-08-21 | 2014-08-28 | 54 |  |  |  |  |  |  |  | 0.25d | 0d | Lukas [50%] | 6h |  |  |
| 56 | 2.5.4 | Filtern in "WDR" |  | 2d | 2014-08-28 | 2014-09-02 | 55 |  |  |  |  |  |  |  | 0.57d | 0d | Lukas [50%] | 8h |  |  |
| 57 | 2.5.5 | Streamen von "WDR" |  | 1d | 2014-09-02 | 2014-09-03 | 56 |  |  |  |  |  |  |  | 0.57d | 0d | Lukas [50%] | 4h |  |  |
| 58 | 2.5.6 | "WDR" Mediathek eingebunden | milestone | 0d | 2014-09-03 | 2014-09-03 | 57 |  |  |  |  |  |  |  | 0.57d |  | Lukas |  |  |  |
| 59 | 2.6 | **"Arte" Mediathek** |  | 6.62d | 2014-08-07 | 2014-09-01 | 26 |  |  |  |  |  |  |  | 0d |  |  | 30h |  |  |
| 60 | 2.6.1 | Suchen in "Arte" |  | 1.5d | 2014-08-07 | 2014-08-12 |  |  |  |  |  |  |  |  | 0d |  | David [50%] | 6h |  |  |
| 61 | 2.6.2 | Neue Sendungen in "Arte" |  | 1.5d | 2014-08-12 | 2014-08-18 | 60 |  |  |  |  |  |  |  | 0d |  | David [50%] | 6h |  |  |
| 62 | 2.6.3 | Rubriken in "Arte" |  | 1.5d | 2014-08-18 | 2014-08-21 | 61 |  |  |  |  |  |  |  | 0d |  | David [50%] | 6h |  |  |
| 63 | 2.6.4 | Filtern in "Arte" |  | 2d | 2014-08-21 | 2014-08-28 | 62 |  |  |  |  |  |  |  | 0d |  | David [50%] | 8h |  |  |
| 64 | 2.6.5 | Streamen von "Arte" |  | 1d | 2014-08-28 | 2014-09-01 | 63 |  |  |  |  |  |  |  | 0d |  | David [50%] | 4h |  |  |
| 65 | 2.6.6 | "Arte" Mediathek eingebunden | milestone | 0d | 2014-09-01 | 2014-09-01 | 64 |  |  |  |  |  |  |  | 0d |  | David |  |  |  |
| 66 | 2.7 | Kombination Suchalgorithmen |  | 1d | 2014-08-14 A | 2014-09-01 | 27, 45, 9, 59 | 50% | 0.5d |  |  |  | 2014-09-03 | 2014-09-05 | 1.8d |  | Lukas [50%] | 4h | 2h | Mediatheken einbinden |
| 67 | 3 | **Grundgerüst der Seite** |  | 3.5d | 2014-06-02 A | 2014-06-12 A |  | 100% |  | 2014-06-02 | 2014-06-12 | 3.5d | 2014-06-02 | 2014-06-12 |  |  |  | 18h | 18h |  |
| 68 | 3.1 | Datenbankschema |  | 0.5d | 2014-06-02 A | 2014-06-02 A |  | 100% |  | 2014-06-02 | 2014-06-02 | 0.5d | 2014-06-02 | 2014-06-02 |  |  | Lukas [50%] | 2h | 2h | Grundgerüst |
| 69 | 3.2 | PHP Framework |  | 2.5d | 2014-06-03 A | 2014-06-10 A | 68 | 100% |  | 2014-06-03 | 2014-06-09 | 2d | 2014-06-03 | 2014-06-10 |  |  | Lukas [50%] | 10h | 10h |  |
| 70 | 3.3 | User Login |  | 1.5d | 2014-06-09 A | 2014-06-12 A | 69 | 100% |  | 2014-06-09 | 2014-06-12 | 1.5d | 2014-06-09 | 2014-06-12 |  |  | Lukas [50%] | 6h | 6h |  |
| 71 | 4 | **Interface** |  | 28.75d | 2014-06-02 A | 2014-09-03 |  | 28% | 20.82d | 2014-06-02 | 2014-09-04 | 29d | 2014-06-02 | 2014-09-05 | 0d |  |  | 261.5h | 109h |  |
| 72 | 4.1 | Sketching |  | 2d | 2014-06-02 A | 2014-06-05 A |  | 100% |  | 2014-06-02 | 2014-06-05 | 2d | 2014-06-02 | 2014-06-05 |  |  | David [50%]; Felix [50%]; Lukas [50%]; Tobias [50%] | 32h | 32h | Interface |
| 73 | 4.2 | UI Entwürfe abgschlossen | milestone | 0d | 2014-06-05 A | 2014-06-05 A | 72 | 100% |  | 2014-06-05 | 2014-06-05 | 0d | 2014-06-05 | 2014-06-05 |  |  | Felix |  |  |  |
| 74 | 4.3 | **Prototyping** |  | 4.62d | 2014-06-05 A | 2014-06-24 A | 73 | 100% |  |  |  |  | 2014-06-05 | 2014-06-24 |  |  |  | 41h | 41h |  |
| 75 | 4.3.1 | Axure Prototype erstellen |  | 4d | 2014-06-05 A | 2014-06-19 A |  | 100% |  |  |  |  | 2014-06-05 | 2014-06-19 |  |  | Felix [50%]; Tobias [50%] | 32h | 32h | Prototyping |
| 76 | 4.3.2 | Prototype testen |  | 0.5d | 2014-06-12 A | 2014-06-12 A | 75 | 100% |  |  |  |  | 2014-06-12 | 2014-06-12 |  |  | Felix [50%]; Tobias [50%] | 4h | 4h |  |
| 77 | 4.3.3 | Prototype iterieren |  | 0.5d | 2014-06-17 A | 2014-06-17 A | 76 | 100% |  |  |  |  | 2014-06-17 | 2014-06-17 |  |  | Felix [50%]; Tobias [50%] | 4h | 4h |  |
| 78 | 4.3.4 | Prototype erneut testen |  | 0.5d | 2014-06-24 A | 2014-06-24 A | 77 | 100% |  |  |  |  | 2014-06-24 | 2014-06-24 |  |  | Felix [25%]; David [25%]; Tobias [25%] | 1h | 1h |  |

| ID | WBS | Task | Type | Duration | Start | Finish | Predecessors | Complete | Remaining | Baseline 1 start | Baseline 1 finish | Total slack | Free slack | Constraint | Resources | Work | Actual work | Übergeordneter Vorgang | Deliverables |
| --- | --- | --- | --- | --- | --- | --- | --- | --- | --- | --- | --- | --- | --- | --- | --- | --- | --- | --- | --- |
| 79 | 4.4 | **Screendesign** |  | 7.5d | 2014-06-24 A | 2014-07-22 | 74 | 47% | 3.95d | 2014-06-24 | 2014-07-21 | 14.25d |  |  |  | 72.5h | 36h |  |  |
| 80 | 4.4.1 | Screendesign Startseite |  | 2.5d | 2014-06-24 A | 2014-07-03 |  | 60% | 1d | 2014-06-24 | 2014-07-01 | 0.62d | 0d |  | Felix [50%]; Tobias [50%] | 18h | 12h | Screendesign |  |
| 81 | 4.4.2 | Screendesign Suche |  | 2.5d | 2014-07-01 A | 2014-07-08 | 80 | 60% | 1d | 2014-07-01 | 2014-07-08 | 1d | 0d |  | Felix [50%]; Tobias [50%] | 20h | 12h |  |  |
| 82 | 4.4.3 | Screendesign Persönlicher Bereich |  | 2d | 2014-07-08 | 2014-07-15 | 81 |  |  | 2014-07-08 | 2014-07-14 | 1d | 0d |  | Felix [50%]; Tobias [50%] | 16h |  | Screendesign |  |
| 83 | 4.4.4 | Screendesign Sendungsbereich |  | 2.5d | 2014-07-15 A | 2014-07-22 | 82 | 60% | 1d | 2014-07-15 | 2014-07-21 | 11.38d | 0d |  | Felix [50%]; Tobias [50%] | 18.5h | 12h |  |  |
| 84 | 4.4.5 | Screendesign abgeschlossen | milestone | 0d | 2014-07-22 A | 2014-07-22 | 83 | 50% | 0d | 2014-07-21 | 2014-07-21 | 14.25d |  |  | Felix |  |  |  |  |
| 85 | 4.5 | Logo-Entwurf |  | 1d | 2014-07-22 | 2014-07-24 | 83 |  |  |  |  | 12.25d |  |  | David [25%]; Felix [25%]; Lukas [25%]; Tobias [25%] | 8h |  |  |  |
| 86 | 4.6 | **Technische Umsetzung** |  | 19.38d | 2014-07-03 | 2014-09-03 | 69 |  |  | 2014-07-21 | 2014-09-05 | 0d |  |  |  | 108h |  |  | HTML Grundgerüst |
| 87 | 4.6.1 | **Startseite** |  | 10.62d | 2014-07-03 | 2014-08-11 | 80 |  |  | 2014-07-21 | 2014-08-14 | 0d |  |  |  | 30h |  |  |  |
| 88 | 4.6.1.1 | Beliebte Sendungen |  | 1d | 2014-07-03 | 2014-07-07 |  |  |  | 2014-07-21 | 2014-07-24 | 4.5d | 0d |  | Tobias [75%] | 6h |  | Erstellung der Templates |  |
| 89 | 4.6.1.2 | Neue Sendungen |  | 2d | 2014-07-07 | 2014-07-10 | 88 |  |  | 2014-07-28 | 2014-07-31 | 4d | 0d |  | Felix [50%] | 8h |  |  |  |
| 90 | 4.6.1.3 | Kategorisierung |  | 2d | 2014-07-14 | 2014-07-17 | 89 |  |  | 2014-07-31 | 2014-08-07 | 4.12d | 0d |  | Felix [50%] | 8h |  |  |  |
| 91 | 4.6.1.4 | Filterung |  | 2d | 2014-07-17 | 2014-07-24 | 90 |  |  | 2014-08-07 | 2014-08-14 | 4.12d |  |  | Felix [50%] | 8h |  |  |  |
| 92 | 4.6.1.5 | Grundgerüst der Startseite abgeschlossen | milestone | 0d | 2014-08-11 | 2014-08-11 | 91 |  |  | 2014-08-14 | 2014-08-14 | 0d |  | as late as possible | Felix; Lukas; David; Tobias |  |  |  |  |
| 93 | 4.6.2 | Suche |  | 2d | 2014-07-08 | 2014-07-15 | 81 |  |  | 2014-07-21 | 2014-07-24 | 14.88d |  |  | Tobias [50%] | 8h |  |  |  |
| 94 | 4.6.3 | Sendung-Detailsseite |  | 2d | 2014-07-22 | 2014-07-28 | 83 |  |  | 2014-07-21 | 2014-07-24 | 11.38d |  |  | Tobias [50%] | 8h |  |  |  |
| 95 | 4.6.4 | **Persönlicher Bereich** |  | 16d | 2014-07-15 | 2014-09-03 | 82 |  |  | 2014-07-21 | 2014-09-05 | 0d |  |  |  | 28h |  |  |  |
| 96 | 4.6.4.1 | Dashboard (Übersicht) |  | 1d | 2014-07-15 | 2014-07-17 |  |  |  | 2014-07-21 | 2014-07-22 | 9.12d | 0d |  | Tobias | 8h |  | Programmierung |  |
| 97 | 4.6.4.2 | Reminder & Abos |  | 2d | 2014-07-17 | 2014-07-24 | 96 |  |  | 2014-07-22 | 2014-07-29 | 9.12d | 0.12d |  | Felix [50%] | 8h |  |  |  |
| 98 | 4.6.4.3 | Playlisten |  | 2d | 2014-07-24 | 2014-07-31 | 97 |  |  | 2014-07-29 | 2014-08-05 | 9.12d | 0d |  | Tobias [50%] | 8h |  |  |  |
| 99 | 4.6.4.4 | Merkliste |  | 1d | 2014-07-31 | 2014-08-04 | 98 |  |  | 2014-08-05 | 2014-08-11 | 9.38d |  |  | Tobias [50%] | 4h |  |  |  |
| 100 | 4.6.4.5 | Grundgerüst des persönlichen Bereichs abgeschlossen | milestone | 0d | 2014-09-03 | 2014-09-03 | 99 |  |  | 2014-09-05 | 2014-09-05 | 0d |  | as late as possible | Felix; Lukas; David; Tobias |  |  |  |  |
| 101 | 4.6.5 | **Design-Umsetzung** |  | 4.75d | 2014-08-11 | 2014-08-26 |  |  |  | 2014-08-14 | 2014-09-02 | 0d |  |  |  | 22h |  |  | CSS |
| 102 | 4.6.5.1 | Umsetzung Startseite |  | 2.5d | 2014-08-11 | 2014-08-18 | 92 |  |  | 2014-08-14 | 2014-08-21 | 0d |  |  | Felix [50%] | 10h |  | Design-Umsetzung |  |
| 103 | 4.6.5.2 | Umsetzung Sendung-Detailseite |  | 2d | 2014-08-18 | 2014-08-21 | 102 |  |  | 2014-08-21 | 2014-08-28 | 0d |  |  | Felix [50%] | 8h |  |  |  |
| 104 | 4.6.5.3 | Umsetzung Persönlicher Bereich |  | 1d | 2014-08-25 | 2014-08-26 | 103 |  |  | 2014-08-28 | 2014-09-02 | 0d |  |  | Tobias [50%] | 4h |  |  |  |
| 105 | 4.6.6 | Anpassungen (Design) |  | 2d | 2014-08-26 | 2014-09-01 | 104 |  |  | 2014-09-02 | 2014-09-04 | 0d |  |  | Tobias [50%] | 8h |  |  |  |
| 106 | 4.6.7 | Browserspezifische Anpassungen |  | 1d | 2014-09-01 | 2014-09-02 | 105 |  |  | 2014-09-04 | 2014-09-05 | 0d |  |  | Tobias [50%] | 4h |  |  |  |
| 107 | 4.6.8 | Interface abgeschlossen | milestone | 0d | 2014-09-02 | 2014-09-02 | 106 |  |  | 2014-09-05 | 2014-09-05 | 0.75d |  |  | Felix |  |  |  |  |

| ID | WBS | Task | Type | Duration | Start | Finish | Predecessors | Baseline 1 start | Baseline 1 finish | Total slack | Resources | Work | Übergeordneter Vorgang |
| --- | --- | --- | --- | --- | --- | --- | --- | --- | --- | --- | --- | --- | --- |
| 108 | 5 | **Testing** |  | 3d | 2014-09-03 | 2014-09-08 | 7, 71 | 2014-09-05 | 2014-09-10 | 0d |  | 92h |  |
| 109 | 5.1 | Softwaretests |  | 2d | 2014-09-03 | 2014-09-05 |  | 2014-09-05 | 2014-09-09 | 0d | David; Felix; Lukas; Tobias | 62h | Testing |
| 110 | 5.2 | Usability-Test |  | 1d | 2014-09-05 | 2014-09-08 | 109 | 2014-09-09 | 2014-09-10 | 0d | David; Felix; Lukas; Tobias | 30h |  |
| 111 | 6 | Projektabschluss | milestone | 0d | 2014-09-08 | 2014-09-08 | 108 |  |  | 0d | Lukas; David; Felix; Tobias |  |  |
